Schedule from MS Project, 2015-06-02 to 2015-08-19.

## Calendars

- Standard: Mon-Fri 08:00-12:00, 13:00-17:00; Sat-Sun off.

## Schedule

| ID | WBS | Task | Type | Duration | Start | Finish | Predecessors | Total slack | Constraint |
| --- | --- | --- | --- | --- | --- | --- | --- | --- | --- |
| 1 | 1 | **Requirements analysis** |  | 16.62d | 2015-06-02 11:00 | 2015-06-24 17:00 |  | 0d | start no earlier than 2015-06-02 11:00 |
| 2 | 1.1 | Identify the scope |  | 2d | 2015-06-02 11:00 | 2015-06-04 11:00 |  | 10.62d | start no earlier than 2015-06-02 11:00 |
| 3 | 1.2 | Project proposal |  | 8d | 2015-06-03 08:00 | 2015-06-12 19:00 |  | 0d | finish no earlier than 2015-06-12 19:00 |
| 4 | 1.3 | Client Approval | milestone | 0d | 2015-06-12 19:00 | 2015-06-12 19:00 | 3 | 8d |  |
| 5 | 1.4 | Gathering Requirements |  | 3d | 2015-06-15 08:00 | 2015-06-17 17:00 | 3 | 0d | start no earlier than 2015-06-02 11:00 |
| 6 | 1.5 | Functional Requirement Specification |  | 5d | 2015-06-18 08:00 | 2015-06-24 17:00 | 5 | 0d | finish no earlier than 2015-06-18 19:00 |
| 7 | 2 | **Design and planning** |  | 6d | 2015-06-25 08:00 | 2015-07-02 17:00 | 1 | 0d |  |
| 8 | 2.1 | **System Design** |  | 2d | 2015-06-25 08:00 | 2015-06-26 17:00 |  | 0d |  |
| 9 | 2.1.1 | System Design Specification |  | 1d | 2015-06-25 08:00 | 2015-06-25 17:00 |  | 0d | start no earlier than 2015-06-08 08:00 |
| 10 | 2.1.2 | Platform Verification |  | 1d | 2015-06-26 08:00 | 2015-06-26 17:00 | 9 | 0d | start no earlier than 2015-06-08 08:00 |
| 11 | 2.2 | **Planning** |  | 4d | 2015-06-29 08:00 | 2015-07-02 17:00 | 8 | 0d |  |
| 12 | 2.2.1 | Project Team Kick off Meeting |  | 1d | 2015-06-29 08:00 | 2015-06-29 17:00 |  | 0d | start no earlier than 2015-06-08 08:00 |
| 13 | 2.2.2 | Project ramp up |  | 4d | 2015-06-29 08:00 | 2015-07-02 17:00 |  | 45.75d |  |
| 14 | 3 | **Development** |  | 32.75d | 2015-06-30 08:00 | 2015-08-13 15:00 | 12 | 0d |  |
| 15 | 3.1 | **Sprint 1 : Interface design –Phase 1** |  | 4.5d | 2015-06-30 08:00 | 2015-07-06 12:00 |  | 0d |  |
| 16 | 3.1.1 | Master page design |  | 1d | 2015-06-30 08:00 | 2015-06-30 17:00 |  | 0d | start no earlier than 2015-06-08 08:00 |
| 17 | 3.1.2 | Student login page |  | 0.5d | 2015-07-01 08:00 | 2015-07-01 12:00 | 16 | 0d | start no earlier than 2015-06-08 08:00 |
| 18 | 3.1.3 | Search filter page |  | 0.5d | 2015-07-01 13:00 | 2015-07-01 17:00 | 17 | 0d | start no earlier than 2015-06-08 08:00 |
| 19 | 3.1.4 | Logo |  | 0.5d | 2015-07-02 08:00 | 2015-07-02 12:00 | 18 | 0d | start no earlier than 2015-06-08 08:00 |
| 20 | 3.1.5 | Home page |  | 0.5d | 2015-07-02 13:00 | 2015-07-02 17:00 | 19 | 0d | start no earlier than 2015-06-08 08:00 |
| 21 | 3.1.6 | Sign up pages- institute/agents |  | 0.5d | 2015-07-03 08:00 | 2015-07-03 12:00 | 20 | 0d | start no earlier than 2015-06-08 08:00 |
| 22 | 3.1.7 | **Profile pages – institute/agents** |  | 1d | 2015-07-03 13:00 | 2015-07-06 12:00 | 21 | 0d |  |
| 23 | 3.1.7.1 | Add course details page |  | 0.5d | 2015-07-03 13:00 | 2015-07-03 17:00 |  | 0.5d |  |
| 24 | 3.1.7.2 | Add institute/organization details |  | 0.5d | 2015-07-03 13:00 | 2015-07-03 17:00 |  | 0.5d |  |
| 25 | 3.1.7.3 | Add verification page |  | 1d | 2015-07-03 13:00 | 2015-07-06 12:00 |  | 0d |  |

| ID | WBS | Task | Duration | Start | Finish | Predecessors | Total slack |
| --- | --- | --- | --- | --- | --- | --- | --- |
| 26 | 3.2 | **Sprint 2 – Interface design – Phase 2** | 2.75d | 2015-07-06 13:00 | 2015-07-09 10:00 | 15 | 0d |
| 27 | 3.2.1 | **Admin pages** | 1.5d | 2015-07-06 13:00 | 2015-07-07 17:00 |  | 0d |
| 28 | 3.2.1.1 | List institute/agents | 0.25d | 2015-07-06 13:00 | 2015-07-06 15:00 |  | 0d |
| 29 | 3.2.1.2 | Edit/approve/block/reject institute/agents | 0.25d | 2015-07-06 15:00 | 2015-07-06 17:00 | 28 | 0d |
| 30 | 3.2.1.3 | Edit/Delete course details | 0.5d | 2015-07-07 08:00 | 2015-07-07 12:00 | 29 | 0d |
| 31 | 3.2.1.4 | Add advertisement banners | 0.25d | 2015-07-07 13:00 | 2015-07-07 15:00 | 30 | 0d |
| 32 | 3.2.1.5 | Add/edit categories | 0.25d | 2015-07-07 15:00 | 2015-07-07 17:00 | 31 | 0d |
| 33 | 3.2.2 | **Institute Filter page** | 1.25d | 2015-07-08 08:00 | 2015-07-09 10:00 | 27 | 0d |
| 34 | 3.2.2.1 | Design search filter | 0.25d | 2015-07-08 08:00 | 2015-07-08 10:00 |  | 0d |
| 35 | 3.2.2.2 | Career guidance pages | 0.25d | 2015-07-08 10:00 | 2015-07-08 12:00 | 34 | 0d |
| 36 | 3.2.2.3 | Filter results page | 0.25d | 2015-07-08 13:00 | 2015-07-08 15:00 | 35 | 0d |
| 37 | 3.2.2.4 | Filter results based on the career path | 0.25d | 2015-07-08 15:00 | 2015-07-08 17:00 | 36 | 0d |
| 38 | 3.2.2.5 | Filer results based on the agents and location of institute | 0.25d | 2015-07-09 08:00 | 2015-07-09 10:00 | 37 | 0d |
| 39 | 3.3 | **Sprint 3 – Database Design** | 2d | 2015-07-09 10:00 | 2015-07-13 10:00 | 26 | 0d |
| 40 | 3.3.1 | Database design | 1d | 2015-07-09 10:00 | 2015-07-10 10:00 |  | 0d |
| 41 | 3.3.2 | Database implementation | 1d | 2015-07-10 10:00 | 2015-07-13 10:00 | 40 | 0d |
| 42 | 3.4 | **Sprint 4 – Application Development – Phase 1** | 7d | 2015-07-13 10:00 | 2015-07-22 10:00 | 39 | 0d |
| 43 | 3.4.1 | Application Design | 2d | 2015-07-13 10:00 | 2015-07-15 10:00 |  | 0d |
| 44 | 3.4.2 | login module development | 1d | 2015-07-15 10:00 | 2015-07-16 10:00 | 43 | 0d |
| 45 | 3.4.3 | Sign up module for institutes | 1d | 2015-07-16 10:00 | 2015-07-17 10:00 | 44 | 0d |
| 46 | 3.4.4 | Implement add course details method | 1d | 2015-07-17 10:00 | 2015-07-20 10:00 | 45 | 0d |
| 47 | 3.4.5 | Implement add institute/organization details method | 1d | 2015-07-20 10:00 | 2015-07-21 10:00 | 46 | 0d |
| 48 | 3.4.6 | implement verification process | 1d | 2015-07-21 10:00 | 2015-07-22 10:00 | 47 | 0d |
| 49 | 3.5 | **Sprint 5 – Application Development – Phase 2** | 7d | 2015-07-22 10:00 | 2015-07-31 10:00 | 42 | 0d |
| 50 | 3.5.1 | Sign up module for Agents | 2d | 2015-07-22 10:00 | 2015-07-24 10:00 |  | 0d |
| 51 | 3.5.2 | Implement add Agent details method | 2d | 2015-07-24 10:00 | 2015-07-28 10:00 | 50 | 0d |
| 52 | 3.5.3 | Implement add institute/organization details method | 2d | 2015-07-28 10:00 | 2015-07-30 10:00 | 51 | 0d |
| 53 | 3.5.4 | Implement verification process | 0.5d | 2015-07-30 10:00 | 2015-07-30 15:00 | 52 | 0d |
| 54 | 3.5.5 | Implement add advertisement modules | 0.5d | 2015-07-30 15:00 | 2015-07-31 10:00 | 53 | 0d |

| ID | WBS | Task | Type | Duration | Start | Finish | Predecessors | Total slack | Constraint |
| --- | --- | --- | --- | --- | --- | --- | --- | --- | --- |
| 55 | 3.6 | **Sprint 6 – Application Development –Phase 3** |  | 5d | 2015-07-31 10:00 | 2015-08-07 10:00 | 49 | 0d |  |
| 56 | 3.6.1 | Advance Search based on the filters |  | 1d | 2015-07-31 10:00 | 2015-08-03 10:00 |  | 0d |  |
| 57 | 3.6.2 | Show all paths available with counts |  | 1d | 2015-08-03 10:00 | 2015-08-04 10:00 | 56 | 0d |  |
| 58 | 3.6.3 | Filter results based on a career |  | 2d | 2015-08-04 10:00 | 2015-08-06 10:00 | 57 | 0d |  |
| 59 | 3.6.4 | Simple search without minimum requirements search filter |  | 1d | 2015-08-06 10:00 | 2015-08-07 10:00 | 58 | 0d |  |
| 60 | 3.7 | **Sprint 7 – Application Development – Phase 4** |  | 2.5d | 2015-08-07 10:00 | 2015-08-11 15:00 | 55 | 0d |  |
| 61 | 3.7.1 | Implement save search filter |  | 1d | 2015-08-07 10:00 | 2015-08-10 10:00 |  | 0d |  |
| 62 | 3.7.2 | load saved filters |  | 0.5d | 2015-08-10 10:00 | 2015-08-10 15:00 | 61 | 0d |  |
| 63 | 3.7.3 | Save preferred institutes |  | 0.5d | 2015-08-10 15:00 | 2015-08-11 10:00 | 62 | 0d |  |
| 64 | 3.7.4 | Create account using an email |  | 0.5d | 2015-08-11 10:00 | 2015-08-11 15:00 | 63 | 0d |  |
| 65 | 3.8 | **Sprint 8 – Application Development – Phase 5** |  | 2d | 2015-08-11 15:00 | 2015-08-13 15:00 | 60 | 0d |  |
| 66 | 3.8.1 | Create notification of profile expiration |  | 1d | 2015-08-11 15:00 | 2015-08-12 15:00 |  | 0d |  |
| 67 | 3.8.2 | Add payment pages |  | 1d | 2015-08-12 15:00 | 2015-08-13 15:00 | 66 | 0d |  |
| 68 | 4 | **Testing and Defect Fixing** |  | 2d | 2015-08-13 15:00 | 2015-08-17 15:00 | 65 | 0d |  |
| 69 | 4.1 | Integration Testing |  | 1d | 2015-08-13 15:00 | 2015-08-14 15:00 |  | 0d | start no earlier than 2015-06-08 08:00 |
| 70 | 4.2 | Defect Fixing |  | 1d | 2015-08-14 15:00 | 2015-08-17 15:00 | 69 | 0d | start no earlier than 2015-06-08 08:00 |
| 71 | 4.3 | Release Final Build | milestone | 0d | 2015-08-17 15:00 | 2015-08-17 15:00 | 70 | 0d | start no earlier than 2015-06-08 08:00 |
| 72 | 5 | **Deployment** |  | 1d | 2015-08-17 15:00 | 2015-08-18 15:00 | 68 | 0d |  |
| 73 | 5.1 | Configure Test Server |  | 1d | 2015-08-17 15:00 | 2015-08-18 15:00 |  | 0d |  |
| 74 | 5.2 | Deploy Build |  | 1d | 2015-08-17 15:00 | 2015-08-18 15:00 |  | 0d |  |
| 75 | 6 | **UAT** |  | 1d | 2015-08-18 15:00 | 2015-08-19 15:00 | 72 | 0d |  |
| 76 | 6.1 | Testing |  | 1d | 2015-08-18 15:00 | 2015-08-19 15:00 |  | 0d |  |
| 77 | 6.2 | UAT Defect Fixing |  | 1d | 2015-08-18 15:00 | 2015-08-19 15:00 |  | 0d |  |
| 78 | 6.3 | Release Final Build |  | 1d | 2015-08-18 15:00 | 2015-08-19 15:00 |  | 0d |  |
| 79 | 7 | Closing | milestone | 0d | 2015-08-19 15:00 | 2015-08-19 15:00 | 75 | 0d | start no earlier than 2015-06-08 08:00 |
